# M365 Copilot Connector Platform - Implementation (4 connectors)

How a schedule from MS Project XML changed from version to version. A marks actual dates.

## Version 1 (saved 2026-07-18)

Note of the change: Add programme plan (Excel + MS Project XML) and genesis prompt

| ID | WBS | Task | Duration | Start | Finish | Predecessors | Constraint |
| --- | --- | --- | --- | --- | --- | --- | --- |
| 1 | 1 | **PHASE 0 — Initiation, funding, procurement & staffing** |  | 2026-08-17 | 2027-03-05 |  |  |
| 2 |  | Project charter & scope approved (4 connectors) | 10d | 2026-08-17 | 2026-08-28 |  |  |
| 3 |  | Architecture board briefing (diagram + operator guides) | 3d | 2026-08-31 | 2026-09-02 | 2 |  |
| 4 |  | [BANK] Funding & FTE plan approved (finance committee cycle) | 15d | 2026-08-31 | 2026-09-21 | 2 |  |
| 5 |  | [BANK] Procurement: SOW/PO for external services (contractor cover) | 20d | 2026-09-22 | 2026-10-20 | 4 |  |
| 6 |  | [BANK] Requisition approval — Senior .NET Engineer | 10d | 2026-09-22 | 2026-10-05 | 4 |  |
| 7 |  | [BANK] Sourcing + interviews (.NET hire) | 30d | 2026-10-06 | 2026-11-18 | 6 |  |
| 8 |  | [BANK] Offer accepted + notice period served | 45d | 2026-11-19 | 2027-02-19 | 7 |  |
| 9 |  | [BANK] New-hire onboarding + system access | 10d | 2027-02-22 | 2027-03-05 | 8 |  |
| 10 |  | [BANK] Internal staff released: 2 Ops Analysts + QA agreed with line managers | 10d | 2026-09-22 | 2026-10-05 | 4 |  |
| 11 |  | [BANK] Ops/QA access provisioning + onboarding | 10d | 2026-10-06 | 2026-10-20 | 10 |  |
| 12 |  | [BANK] Source-system liaisons + backups formally named (4 systems) | 10d | 2026-08-31 | 2026-09-14 | 2 |  |
| 13 |  | [SEC] InfoSec engagement: intake form + review slot in queue | 10d | 2026-08-31 | 2026-09-14 | 2 |  |
| 14 |  | [SEC] DPO engaged — Altrata DPIA opened | 5d | 2026-09-15 | 2026-09-21 | 12 |  |
| 15 |  | [CAB] CAB onboarding: change templates + calendar slots | 3d | 2026-08-31 | 2026-09-02 | 2 |  |
| 16 | 2 | **PHASE 1 — Foundations: tenant, infrastructure, security reviews** |  | 2026-08-31 | 2026-12-02 |  |  |
| 17 |  | [BANK] Dev/test M365 tenant access request (platform team queue) | 10d | 2026-08-31 | 2026-09-14 | 2 |  |
| 18 |  | [BANK] App-registration requests approved (4 apps, platform queue) | 10d | 2026-09-15 | 2026-09-28 | 17 |  |
| 19 |  | App registrations + admin consent executed | 3d | 2026-09-29 | 2026-10-01 | 18 |  |
| 20 |  | [BANK] PKI: certificate credentials issued (CA queue) | 15d | 2026-10-02 | 2026-10-23 | 19 |  |
| 21 |  | Key Vault set up + secrets loaded | 5d | 2026-10-26 | 2026-10-30 | 20 |  |
| 22 |  | [BANK] Dev/test Windows Server VMs (infrastructure request queue) | 15d | 2026-09-22 | 2026-10-13 | 4 |  |
| 23 |  | [BANK] Prod VMs — active-active HA pair (infrastructure queue) | 15d | 2026-10-14 | 2026-11-03 | 22 |  |
| 24 |  | [BANK] gMSA + service accounts (identity team queue) | 15d | 2026-10-14 | 2026-11-03 | 22 |  |
| 25 |  | [BANK] Firewall egress change requests submitted (4 sources + Graph) | 15d | 2026-09-15 | 2026-10-05 | 12 |  |
| 26 |  | Firewall egress implemented + verified | 5d | 2026-10-06 | 2026-10-13 | 25 |  |
| 27 |  | Proxy / TLS-inspection CA bundles distributed | 5d | 2026-10-14 | 2026-10-20 | 26 |  |
| 28 |  | [SEC] Webhook inbound exposure review (security) | 10d | 2026-10-06 | 2026-10-20 | 25 |  |
| 29 |  | Webhook inbound rules implemented | 5d | 2026-10-21 | 2026-10-27 | 26, 28 |  |
| 30 |  | [BANK] SQL Server instance + DBs scheduled (DBA queue) | 10d | 2026-10-14 | 2026-10-27 | 22 |  |
| 31 |  | State DBs built + backup jobs proven | 5d | 2026-10-28 | 2026-11-03 | 30 |  |
| 32 |  | [BANK] SIEM onboarding request (queue) | 15d | 2026-10-14 | 2026-11-03 | 22 |  |
| 33 |  | SIEM ingestion + detection rules live | 5d | 2026-11-04 | 2026-11-10 | 32 |  |
| 34 |  | Grafana dashboards + alert rules imported (ops/) | 3d | 2026-10-14 | 2026-10-16 | 22 |  |
| 35 |  | CI/CD live: runners, signing, SBOM (interim contractor) | 10d | 2026-10-21 | 2026-11-03 | 5 |  |
| 36 |  | [CAB] Architecture Review Board submission | 3d | 2026-09-03 | 2026-09-08 | 3 |  |
| 37 |  | [CAB] ARB approval (board cycle) | 1d | 2026-09-30 | 2026-09-30 | 36FS+15d |  |
| 38 |  | [CAB] ARB conditions closed out | 5d | 2026-10-01 | 2026-10-07 | 37 |  |
| 39 |  | [SEC] Fleet threat-model pack submitted (4 connectors) | 3d | 2026-10-02 | 2026-10-06 | 13, 19 |  |
| 40 |  | [SEC] Threat-model review (security queue + review) | 10d | 2026-10-29 | 2026-11-12 | 39FS+15d |  |
| 41 |  | [SEC] Threat-model findings remediated | 10d | 2026-11-13 | 2026-11-27 | 40 |  |
| 42 |  | [SEC] Threat-model sign-off | 3d | 2026-11-30 | 2026-12-02 | 41 |  |
| 43 |  | MILESTONE — Foundations complete | 0d | 2026-11-12 | 2026-11-12 | 21, 23, 24, 27, 29, 31, 33, 34, 35, 38 |  |
| 44 | 3 | **PHASE 2A — Wave 1 pilot: Seismic** |  | 2026-09-15 | 2027-04-01 |  |  |
| 45 |  | [BANK] SEI: intake + OAuth credentials + teamsite scope (queues) | 10d | 2026-09-15 | 2026-09-28 | 12 |  |
| 46 |  | [SEC] SEI: No-MNE exclusion policy signed off (compliance) | 10d | 2026-09-29 | 2026-10-13 | 45 |  |
| 47 |  | [BANK] SEI: webhook secret + inbound URL agreed | 5d | 2026-10-28 | 2026-11-03 | 45, 29 |  |
| 48 |  | Test env configured; validate-config --strict green | 2d | 2026-11-13 | 2026-11-16 | 43, 45 |  |
| 49 |  | E2E dev tenant: connection + schema + versioned crawl + webhooks | 10d | 2026-11-17 | 2026-12-01 | 48, 47 |  |
| 50 |  | ACL trimming verified (2 differently-permissioned users) | 5d | 2026-12-02 | 2026-12-08 | 49 |  |
| 51 |  | Exclusion verified — restricted item absent from index | 3d | 2026-12-02 | 2026-12-04 | 46, 49 |  |
| 52 |  | Version supersede / withdraw + incremental verified | 3d | 2026-12-09 | 2026-12-11 | 50 |  |
| 53 |  | Soak: 2 weeks in test environment | 10d | 2026-12-14 | 2027-01-22 | 51, 52 |  |
| 54 |  | [SEC] Pen test requested early (red-team diary booked at foundations) | 3d | 2026-10-14 | 2026-10-16 | 13, 22 |  |
| 55 |  | [SEC] Pen test execution | 10d | 2026-12-02 | 2027-01-11 | 54FS+15d, 49 |  |
| 56 |  | [SEC] Pen-test findings remediated | 10d | 2027-01-12 | 2027-01-26 | 55 |  |
| 57 |  | [SEC] Pen-test retest + closure report | 5d | 2027-01-27 | 2027-02-02 | 56 |  |
| 58 |  | [SEC] InfoSec production sign-off — pilot | 5d | 2027-02-03 | 2027-02-09 | 42, 53, 57 |  |
| 59 |  | [CAB] CAB submission — pilot | 3d | 2027-02-10 | 2027-02-12 | 58 |  |
| 60 |  | [CAB] CAB approval (board cycle) | 1d | 2027-03-02 | 2027-03-02 | 59FS+10d |  |
| 61 |  | [CAB] Prod change window scheduled (post-blackout) | 2d | 2027-03-03 | 2027-03-04 | 60 | start no earlier than 2027-01-11 |
| 62 |  | Prod deployment (MSI/SCCM, service, Key Vault) | 3d | 2027-03-05 | 2027-03-09 | 61, 23 |  |
| 63 |  | First prod crawl + verification | 3d | 2027-03-10 | 2027-03-12 | 62 |  |
| 64 |  | Pilot business users validate Copilot answers | 10d | 2027-03-15 | 2027-03-26 | 63 |  |
| 65 |  | Hypercare — Seismic | 10d | 2027-03-15 | 2027-03-26 | 63 |  |
| 66 |  | Ops handover: runbook walkthrough — Seismic | 3d | 2027-03-29 | 2027-03-31 | 64, 65 |  |
| 67 |  | MILESTONE — Seismic LIVE (pilot) | 0d | 2027-04-01 | 2027-04-01 | 66 |  |
| 68 | 4 | **PHASE 2B — Wave 2: Clarizen + Hadoop BDH (E2E early; prod gated on pilot)** |  | 2026-09-29 | 2027-04-22 |  |  |
| 69 |  | [BANK] CLZ: intake + service credentials + TDW access (queues) | 15d | 2026-09-29 | 2026-10-20 | 12, 45 |  |
| 70 |  | [BANK] CLZ: webhook secret + inbound URL agreed | 5d | 2026-10-28 | 2026-11-03 | 69, 29 |  |

| ID | WBS | Task | Duration | Start | Finish | Predecessors |
| --- | --- | --- | --- | --- | --- | --- |
| 71 |  | [BANK] CLZ: FINANCIAL_DATA_MODE decision (governance owner) | 5d | 2026-10-21 | 2026-10-27 | 69 |
| 72 |  | CLZ: test config + E2E (TDW crawl + webhooks) | 10d | 2026-11-13 | 2026-11-27 | 43, 69, 70 |
| 73 |  | CLZ: financial governance verified in chosen mode | 5d | 2026-11-30 | 2026-12-04 | 71, 72 |
| 74 |  | [SEC] CLZ: InfoSec delta review + sign-off | 10d | 2026-12-07 | 2027-01-14 | 42, 73 |
| 75 |  | [CAB] CLZ: CAB submission | 3d | 2027-03-10 | 2027-03-12 | 74, 62 |
| 76 |  | [CAB] CLZ: CAB approval (board cycle) | 1d | 2027-03-29 | 2027-03-29 | 75FS+10d |
| 77 |  | CLZ: prod deployment + first crawl | 5d | 2027-03-30 | 2027-04-05 | 76 |
| 78 |  | CLZ: webhooks live + verified | 2d | 2027-04-06 | 2027-04-07 | 77 |
| 79 |  | CLZ: hypercare + ops handover | 10d | 2027-04-08 | 2027-04-21 | 78 |
| 80 |  | MILESTONE — Clarizen LIVE | 0d | 2027-04-22 | 2027-04-22 | 79 |
| 81 |  | [BANK] BDH: intake — endpoint, read-only principal, layout (Hadoop queue) | 15d | 2026-09-29 | 2026-10-20 | 12, 45 |
| 82 |  | [BANK] BDH: private CA bundle for WebHDFS TLS | 5d | 2026-10-21 | 2026-10-27 | 81, 27 |
| 83 |  | [BANK] BDH: per-object filter policy workshops + sign-off | 10d | 2026-10-21 | 2026-11-03 | 81 |
| 84 |  | BDH: Graph connection provisioned (carries Salesforce data) | 3d | 2026-10-21 | 2026-10-23 | 19, 81 |
| 85 |  | BDH: validate-config --strict green (fail-closed guard proven) | 5d | 2026-11-13 | 2026-11-19 | 43, 83 |
| 86 |  | BDH: E2E — filtered crawl + watermark + oversize handling | 10d | 2026-11-20 | 2026-12-04 | 82, 84, 85 |
| 87 |  | BDH: scale rehearsal (stress harness scale 3 + volume test) | 5d | 2026-12-07 | 2026-12-11 | 86 |
| 88 |  | [SEC] BDH: InfoSec delta review + sign-off | 10d | 2026-12-14 | 2027-01-22 | 42, 87 |
| 89 |  | [CAB] BDH: CAB submission | 3d | 2027-03-10 | 2027-03-12 | 88, 62 |
| 90 |  | [CAB] BDH: CAB approval (board cycle) | 1d | 2027-03-29 | 2027-03-29 | 89FS+10d |
| 91 |  | BDH: prod deployment + first filtered crawl | 5d | 2027-03-30 | 2027-04-05 | 90 |
| 92 |  | BDH: nightly schedule aligned to upstream sync (00:30) | 2d | 2027-04-06 | 2027-04-07 | 91 |
| 93 |  | BDH: hypercare + ops handover | 10d | 2027-04-08 | 2027-04-21 | 92 |
| 94 |  | MILESTONE — Hadoop BDH LIVE (Salesforce data available) | 0d | 2027-04-22 | 2027-04-22 | 93 |
| 95 | 5 | **PHASE 2C — Wave 3: Altrata (compliance-gated)** |  | 2026-09-22 | 2027-04-20 |  |
| 96 |  | [SEC] ALT: DPIA assessment (privacy impact) | 25d | 2026-09-22 | 2026-10-27 | 14 |
| 97 |  | [SEC] ALT: DPIA legal review + approval | 10d | 2026-10-28 | 2026-11-10 | 96 |
| 98 |  | [BANK] ALT: intake — feed delivery, manifest, SFTP credentials (queues) | 15d | 2026-09-29 | 2026-10-20 | 12, 45 |
| 99 |  | [BANK] ALT: seat-list source, owner + refresh process agreed | 10d | 2026-10-21 | 2026-11-03 | 98 |
| 100 |  | ALT: strict file ACLs on ledger/suppression/state dirs | 3d | 2026-11-04 | 2026-11-06 | 24, 98 |
| 101 |  | ALT: test config + E2E — feed ingest + manifest validation | 10d | 2026-11-13 | 2026-11-27 | 43, 98, 100 |
| 102 |  | ALT: seat-only ACL verified (never-everyone holds) | 5d | 2026-11-30 | 2026-12-04 | 99, 101 |
| 103 |  | ALT: DSAR drill — forget-subject + suppression + ledger verify | 5d | 2026-12-07 | 2026-12-11 | 102 |
| 104 |  | [SEC] ALT: InfoSec + DPO production sign-off | 10d | 2026-12-14 | 2027-01-22 | 42, 97, 103 |
| 105 |  | [CAB] ALT: CAB submission | 3d | 2027-03-10 | 2027-03-12 | 104, 62 |
| 106 |  | [CAB] ALT: CAB approval (board cycle) | 1d | 2027-03-29 | 2027-03-29 | 105FS+10d |
| 107 |  | ALT: prod deployment + first feed ingest | 5d | 2027-03-30 | 2027-04-05 | 106 |
| 108 |  | ALT: DSAR intake process ratified (ops rota + DPO countersign) | 5d | 2026-12-14 | 2027-01-14 | 103 |
| 109 |  | ALT: hypercare + ops handover | 10d | 2027-04-06 | 2027-04-19 | 107, 108 |
| 110 |  | MILESTONE — Altrata LIVE | 0d | 2027-04-20 | 2027-04-20 | 109 |
| 111 | 6 | **PHASE 3 — Operational readiness (parallel with waves)** |  | 2026-11-13 | 2027-04-15 |  |
| 112 |  | Ops training: Common Guide + connector guides + quick-refs | 10d | 2026-11-13 | 2026-11-27 | 11, 43 |
| 113 |  | Runbook drills: dead-letter, breaker, guard refusal | 5d | 2027-04-02 | 2027-04-08 | 112, 67 |
| 114 |  | DR drill: state backup/restore exercised | 5d | 2027-04-02 | 2027-04-08 | 31, 67 |
| 115 |  | Alert-threshold tuning on live telemetry | 10d | 2027-04-02 | 2027-04-15 | 67 |
| 116 |  | On-call & escalation model ratified | 3d | 2026-11-30 | 2026-12-02 | 112 |
| 117 | 7 | **PHASE 4 — Stabilisation, knowledge transfer & BAU** |  | 2027-04-02 | 2027-05-28 |  |
| 118 |  | [BANK] Knowledge transfer: contractor -> permanent .NET hire | 10d | 2027-04-02 | 2027-04-15 | 9, 67 |
| 119 |  | 30-day stability review across all four connectors | 5d | 2027-05-14 | 2027-05-20 | 110FS+15d, 94FS+15d, 80, 67 |
| 120 |  | Tenant capacity & quota review vs TENANT_GOVERNANCE.md | 3d | 2027-05-21 | 2027-05-25 | 119 |
| 121 |  | Decision checkpoint: revisit deferred Salesforce connector | 2d | 2027-05-21 | 2027-05-24 | 119 |
| 122 |  | Lessons learned + documentation refresh | 5d | 2027-05-21 | 2027-05-27 | 119 |
| 123 |  | MILESTONE — Project closure; transition to BAU (4.2 FTE) | 0d | 2027-05-28 | 2027-05-28 | 118, 120, 121, 122 |

## Version 2 (saved 2026-08-14)

Note of the change: Docs: reconcile the whole delivered set against the code

Last finish stays 2027-05-28. Complete tasks 0 → 12.

Added:

| ID | Task | Duration | Start | Finish | Resources |
| --- | --- | --- | --- | --- | --- |
| 124 | **ENGINEERING BASELINE - shared-chassis consolidation delivered on main (pre-Phase 0)** |  | 2026-08-11 A | 2026-08-14 A |  |
| 125 | Connector.Chassis landed as a single top-level project (now v1.18.0) | 1d | 2026-08-11 A | 2026-08-11 A | Platform Lead & Architect |
| 126 | All five connectors switched to ProjectReference on the shared chassis | 2d | 2026-08-11 A | 2026-08-12 A | Platform Lead & Architect |
| 127 | Root CI: 8 workflows - five connectors, chassis, conformance, CodeQL | 3d | 2026-08-11 A | 2026-08-13 A | Platform Lead & Architect |
| 128 | Conformance gate resolves the ProjectReference and asserts the register | 1d | 2026-08-14 A | 2026-08-14 A | Platform Lead & Architect |
| 129 | Divergence register in force - 9 of 23 modules shared, 67 declared copies | 1d | 2026-08-14 A | 2026-08-14 A | Platform Lead & Architect |
| 130 | Alerting consolidated onto the chassis - 4 of the 5 connectors | 1d | 2026-08-14 A | 2026-08-14 A | Platform Lead & Architect |
| 131 | Chassis given its own test suite - 558 tests | 1d | 2026-08-14 A | 2026-08-14 A | Platform Lead & Architect |
| 132 | Environment-flag parsing unified across the fleet | 1d | 2026-08-14 A | 2026-08-14 A | Platform Lead & Architect |
| 133 | Altrata decision ledger - single-byte separator tamper now detected | 1d | 2026-08-14 A | 2026-08-14 A | Platform Lead & Architect |
| 134 | Fleet suite green on both operating systems - 5,445 tests, 0 skipped | 1d | 2026-08-14 A | 2026-08-14 A | QA/Test Engineer |
| 135 | Repository controls: branch protection on main + Dependabot security alerts | 1d | 2026-08-14 A | 2026-08-14 A | Platform Lead & Architect |
| 136 | MILESTONE - shared-chassis consolidation complete on main (e138f11) | 0d | 2026-08-14 A | 2026-08-14 A | Platform Lead & Architect |
